# Project_plan

How a schedule from MS Project changed from version to version. A marks actual dates.

## Version 1 (saved 2012-04-21)

Note of the change: documents

| ID | WBS | Task | Duration | Start | Finish | Predecessors | Total float |
| --- | --- | --- | --- | --- | --- | --- | --- |
| 1 | 1 | **Система за управление на фирмен сервиз за превозни средства** | 182d | 2011-12-19 | 2012-08-28 |  | 0d |
| 2 | 1.1 | **I** | 20d | 2011-12-19 | 2012-01-13 |  | 0d |
| 3 |  | Съставяне на проектен план | 10d | 2011-12-19 | 2011-12-30 |  | 0d |
| 4 |  | Определяне на потребителските изисквания | 5d | 2011-12-19 | 2011-12-23 |  | 5d |
| 5 |  | Определяне на ролите в екипа | 1d | 2011-12-19 | 2011-12-19 |  | 9d |
| 6 |  | Преглед на съществуващата инфраструктура | 5d | 2011-12-19 | 2011-12-23 |  | 5d |
| 7 |  | Изготвяне на план за управлението на качеството | 5d | 2011-12-19 | 2011-12-23 |  | 15d |
| 8 | 1.1.6 | **Уточняване на нещата необходими за следващите фази** | 3d | 2011-12-19 | 2011-12-21 |  | 17d |
| 9 |  | Уточняване на средата за проектиране | 3d | 2011-12-19 | 2011-12-21 |  | 17d |
| 10 |  | Уточняване на средата за разработка | 3d | 2011-12-19 | 2011-12-21 |  | 17d |
| 11 |  | Уточняване на системата за контрол на версиите (Version Control) | 3d | 2011-12-19 | 2011-12-21 |  | 17d |
| 12 |  | Уточняване на системата за контрол на задачите (Issue Tracker) | 3d | 2011-12-19 | 2011-12-21 |  | 17d |
| 13 |  | Уточняване на използвания Application / Web сървър | 3d | 2011-12-19 | 2011-12-21 |  | 17d |
| 14 |  | Уточняване на използваната система за управление на бази от данни | 3d | 2011-12-19 | 2011-12-21 |  | 17d |
| 15 |  | Изготвяне на визията на проекта | 10d | 2012-01-02 | 2012-01-13 | 3, 4, 5, 6 | 0d |
| 16 | 1.2 | **E** | 162d | 2012-01-16 | 2012-08-28 | 2 | 0d |
| 17 | 1.2.1 | **E1 - Начален анализ и дизайн** | 30d | 2012-01-16 | 2012-02-24 |  | 0d |
| 18 |  | Разработване на бизнес модел (BPMs) | 20d | 2012-01-16 | 2012-02-10 |  | 0d |
| 19 |  | Разработване на модел на данните (Data Model) | 10d | 2012-01-16 | 2012-01-27 |  | 20d |
| 20 |  | Разработване на случаите на употреба (Use-case) | 10d | 2012-02-13 | 2012-02-24 | 18 | 0d |
| 21 | 1.2.2 | **E2 - Модул Електронно регистриране** | 110d | 2012-02-27 | 2012-07-27 | 17 | 0d |
| 22 |  | Разработване на клас и обект диаграми (Class and Object Diagrams) | 22d | 2012-02-27 | 2012-03-27 |  | 0d |
| 23 |  | Разработване на потребителски случаи (Use Cases) | 22d | 2012-03-28 | 2012-04-26 | 22 | 0d |
| 24 |  | Разработване на диаграми на последователностите (Sequence Diagrams) | 22d | 2012-04-27 | 2012-05-28 | 23 | 0d |
| 25 |  | Разработване на диаграми на състоянията (State Diagrams) | 22d | 2012-05-29 | 2012-06-27 | 24 | 0d |
| 26 |  | Разработване на тестови случаи | 22d | 2012-06-28 | 2012-07-27 | 25 | 0d |
| 27 | 1.2.3 | **E3 - Модул Склад** | 110d | 2012-02-27 | 2012-07-27 | 17 | 0d |
| 28 |  | Разработване на клас и обект диаграми (Class and Object Diagrams) | 22d | 2012-02-27 | 2012-03-27 |  | 0d |
| 29 |  | Разработване на потребителски случаи (Use Cases) | 22d | 2012-03-28 | 2012-04-26 | 28 | 0d |
| 30 |  | Разработване на диаграми на последователностите (Sequence Diagrams) | 22d | 2012-04-27 | 2012-05-28 | 29 | 0d |
| 31 |  | Разработване на диаграми на състоянията (State Diagrams) | 22d | 2012-05-29 | 2012-06-27 | 30 | 0d |
| 32 |  | Разработване на тестови случаи | 22d | 2012-06-28 | 2012-07-27 | 31 | 0d |
| 33 | 1.2.4 | **E4 - Модул Примане на автомобили** | 110d | 2012-02-27 | 2012-07-27 | 17 | 0d |
| 34 |  | Разработване на клас и обект диаграми (Class and Object Diagrams) | 22d | 2012-02-27 | 2012-03-27 |  | 0d |
| 35 |  | Разработване на потребителски случаи (Use Cases) | 22d | 2012-03-28 | 2012-04-26 | 34 | 0d |
| 36 |  | Разработване на диаграми на последователностите (Sequence Diagrams) | 22d | 2012-04-27 | 2012-05-28 | 35 | 0d |
| 37 |  | Разработване на диаграми на състоянията (State Diagrams) | 22d | 2012-05-29 | 2012-06-27 | 36 | 0d |
| 38 |  | Разработване на тестови случаи | 22d | 2012-06-28 | 2012-07-27 | 37 | 0d |
| 39 | 1.2.5 | **E5 - Модул Гаранционни автомобили** | 110d | 2012-02-27 | 2012-07-27 | 17 | 0d |
| 40 |  | Разработване на клас и обект диаграми (Class and Object Diagrams) | 22d | 2012-02-27 | 2012-03-27 |  | 0d |
| 41 |  | Разработване на потребителски случаи (Use Cases) | 22d | 2012-03-28 | 2012-04-26 | 40 | 0d |
| 42 |  | Разработване на диаграми на последователностите (Sequence Diagrams) | 22d | 2012-04-27 | 2012-05-28 | 41 | 0d |
| 43 |  | Разработване на диаграми на състоянията (State Diagrams) | 22d | 2012-05-29 | 2012-06-27 | 42 | 0d |
| 44 |  | Разработване на тестови случаи | 22d | 2012-06-28 | 2012-07-27 | 43 | 0d |
| 45 | 1.2.6 | **E6 - Модул Счетоводство** | 110d | 2012-02-27 | 2012-07-27 | 17 | 0d |
| 46 |  | Разработване на клас и обект диаграми (Class and Object Diagrams) | 22d | 2012-02-27 | 2012-03-27 |  | 0d |
| 47 |  | Разработване на потребителски случаи (Use Cases) | 22d | 2012-03-28 | 2012-04-26 | 46 | 0d |
| 48 |  | Разработване на диаграми на последователностите (Sequence Diagrams) | 22d | 2012-04-27 | 2012-05-28 | 47 | 0d |
| 49 |  | Разработване на диаграми на състоянията (State Diagrams) | 22d | 2012-05-29 | 2012-06-27 | 48 | 0d |
| 50 |  | Разработване на тестови случаи | 22d | 2012-06-28 | 2012-07-27 | 49 | 0d |
| 51 |  | Финална работа по документацията на проектна фаза E | 22d | 2012-07-30 | 2012-08-28 | 45, 39, 33, 27, 21 | 0d |

## Version 2 (saved 2012-09-02)

Note of the change: Оправен Project Plan

Last finish 2012-08-28 → 2012-10-23 (+56d).

Added:

| ID | Task | Duration | Start | Finish | Predecessors | Resources |
| --- | --- | --- | --- | --- | --- | --- |
| 9 | Изготвяне на документ с препоръки и изисквания при проектирането и разработката | 1d | 2012-08-02 | 2012-08-02 | 6 | Software Architect |
| 10 | Изготвяне на списък с рисковете | 1d | 2012-08-09 | 2012-08-10 | 3, 4 | Project Manager |
| 16 | **Уточняване на хостинга върху който ще се разположи системата** | 5d | 2012-08-03 | 2012-08-09 |  |  |
| 19 | Изготвяне на упътване за конфигурация и използване на нужните интсртументи | 2d | 2012-08-10 | 2012-08-13 | 11 | Software Architect; Database Designer; Designer; Technical Writer |
| 24 | Изготвяне на софтуерната архитектура | 5d | 2012-08-14 | 2012-08-20 |  | Software Architect |
| 25 | Разработване на клас и обект диаграми (високо ниво) | 10d | 2012-08-21 | 2012-09-03 | 24 | Software Architect |
| 26 | **C** | 31d | 2012-09-04 | 2012-10-16 | 20 |  |
| 27 | Разработване на поддържаща (системна) функционалност | 6d | 2012-09-04 | 2012-09-11 |  | Database Designer; Implementer |
| 32 | Имплементиране на модула | 7d | 2012-09-07 | 2012-09-17 | 31, 30, 29 | Implementer [200%] |
| 38 | Имплементиране на модула | 7d | 2012-09-12 | 2012-09-20 | 35, 36, 37 | Implementer [200%] |
| 44 | Имплементиране на модула | 5d | 2012-09-18 | 2012-09-24 | 41, 42, 43, 32 | Implementer [200%] |
| 50 | Имплементиране на модула | 7d | 2012-09-21 | 2012-10-01 | 47, 48, 49, 38 | Implementer [200%] |
| 52 | **Модул Електронно регистриране** | 7d | 2012-09-20 | 2012-09-28 |  |  |
| 56 | Имплементиране на модула | 4d | 2012-09-25 | 2012-09-28 | 53, 54, 55, 44 | Implementer [200%] |
| 58 | **Тестване на системата** | 10d | 2012-10-02 | 2012-10-15 | 27, 28, 34, 40, 46, 52 |  |
| 59 | Функционални тестове | 10d | 2012-10-02 | 2012-10-15 |  | Test Analyst [50%]; Tester |
| 60 | Нефункционални тестове | 10d | 2012-10-02 | 2012-10-15 |  | Test Analyst [50%]; Tester |
| 61 | Изготвяне на материали за обучение | 25d | 2012-09-04 | 2012-10-08 |  | Course Developer |
| 62 | Изготвяне на план за обучение | 1d | 2012-10-09 | 2012-10-09 | 61, 28, 34, 40, 46 | Project Manager; Course Developer [200%] |
| 63 | Изготвяне на документация за поддръжка и обслужване на системата | 25d | 2012-09-04 | 2012-10-08 |  | Technical Writer [25%] |
| 64 | Изготвяне на план за разгъване на системата | 1d | 2012-10-16 | 2012-10-16 | 58 | Project Manager; Software Architect |
| 65 | **T** | 5d | 2012-10-17 | 2012-10-23 | 26 |  |
| 66 | Разгъване, стартиране и конфигуриране на системата | 1d | 2012-10-17 | 2012-10-17 |  | Software Architect |
| 67 | Предаване на документацията по проекта | 1d | 2012-10-17 | 2012-10-17 |  | Business Architect; Project Manager |
| 68 | Обучение на персонала | 5d | 2012-10-17 | 2012-10-23 |  | Course Developer [200%] |

Removed: 17 E1 - Начален анализ и дизайн; 21 E2 - Модул Електронно регистриране; 23 Разработване на потребителски случаи (Use Cases); 29 Разработване на потребителски случаи (Use Cases); 35 Разработване на потребителски случаи (Use Cases); 41 Разработване на потребителски случаи (Use Cases); 47 Разработване на потребителски случаи (Use Cases); 51 Финална работа по документацията на проектна фаза E

Changed:

| ID | Task | Start | Finish | Duration | Total float | Predecessors | Other |
| --- | --- | --- | --- | --- | --- | --- | --- |
| 1 | **Система за управление на фирмен сервиз за превозни средства** | 2011-12-19 → 2012-08-01 (+226d) | 2012-08-28 → 2012-10-23 (+56d) | 182d → 60d |  |  |  |
| 2 | **I** | 2011-12-19 → 2012-08-01 (+226d) | 2012-01-13 → 2012-08-13 (+213d) | 20d → 9d |  |  |  |
| 3 | Съставяне на проектен план | 2011-12-19 → 2012-08-01 (+226d) | 2011-12-30 → 2012-08-09 (+223d) | 10d → 6.25d | 0d → 1.75d |  | resources none → Project Manager [80%] |
| 4 | Определяне на ролите в екипа | 2011-12-19 → 2012-08-01 (+226d) | 2011-12-19 → 2012-08-07 (+232d) | 1d → 5d | 9d → 1d |  | resources none → Project Manager [20%] |
| 5 | Определяне на потребителските изисквания | 2011-12-19 → 2012-08-01 (+226d) | 2011-12-23 → 2012-08-07 (+228d) |  | 5d → 1d |  | resources none → Business Architect [50%]; System Analyst [50%] |
| 6 | Преглед на съществуващата инфраструктура | 2011-12-19 → 2012-08-01 (+226d) | 2011-12-23 → 2012-08-01 (+222d) | 5d → 1d | 5d → 0d |  | resources none → Software Architect |
| 7 | Изготвяне на визията на проекта | 2012-01-02 → 2012-08-08 (+219d) | 2012-01-13 → 2012-08-10 (+210d) | 10d → 3d | 0d → 1d | 3, 5, 4, 6 → 5, 6, 4 | resources none → Business Architect; System Analyst |
| 8 | Изготвяне на план за управлението на качеството | 2011-12-19 → 2012-08-01 (+226d) | 2011-12-23 → 2012-08-01 (+222d) | 5d → 1d | 15d → 8d |  | resources none → Test Analyst |
| 11 | **Уточняване на нещата необходими за следващите фази** | 2011-12-19 → 2012-08-01 (+226d) | 2011-12-21 → 2012-08-09 (+232d) | 3d → 7d | 17d → 0d |  |  |
| 12 | Уточняване на средата за проектиране | 2011-12-19 → 2012-08-01 (+226d) | 2011-12-21 → 2012-08-07 (+230d) | 3d → 5d | 17d → 2d |  | resources none → Designer |
| 13 | Уточняване на средата за разработка | 2011-12-19 → 2012-08-03 (+228d) | 2011-12-21 → 2012-08-09 (+232d) | 3d → 5d | 17d → 0d | none → 9 | resources none → Software Architect [20%] |
| 14 | Уточняване на системата за контрол на версиите (Version Control) | 2011-12-19 → 2012-08-03 (+228d) | 2011-12-21 → 2012-08-09 (+232d) | 3d → 5d | 17d → 0d | none → 9 | resources none → Software Architect [20%] |
| 15 | Уточняване на системата за контрол на задачите (Issue Tracker) | 2011-12-19 → 2012-08-03 (+228d) | 2011-12-21 → 2012-08-09 (+232d) | 3d → 5d | 17d → 0d | none → 9 | resources none → Software Architect [20%] |
| 17 | Уточняване на използвания Application / Web сървър | 2011-12-19 → 2012-08-03 (+228d) | 2011-12-21 → 2012-08-09 (+232d) | 3d → 5d | 17d → 0d | none → 9 | resources none → Software Architect [20%] |
| 18 | Уточняване на използваната система за управление на бази от данни | 2011-12-19 → 2012-08-03 (+228d) | 2011-12-21 → 2012-08-09 (+232d) | 3d → 5d | 17d → 0d | none → 9 | resources none → Software Architect [20%]; Database Designer [200%] |
| 20 | **E** | 2012-01-16 → 2012-08-14 (+211d) | 2012-08-28 → 2012-09-03 (+6d) | 162d → 15d |  |  |  |
| 21 | Разработване на бизнес модел (BPM) | 2012-01-16 → 2012-08-14 (+211d) | 2012-02-10 → 2012-08-23 (+195d) | 20d → 8d |  |  | was named Разработване на бизнес модел (BPMs); resources none → Business Architect [50%]; System Analyst [50%] |
| 22 | Разработване на модел на данните (Data Model) | 2012-01-16 → 2012-08-24 (+221d) | 2012-01-27 → 2012-09-03 (+220d) | 10d → 7d | 20d → 0d | none → 21 | resources none → Database Designer [200%] |
| 23 | Разработване на случаите на употреба (Use-case) | 2012-02-13 → 2012-08-24 (+193d) | 2012-02-24 → 2012-09-03 (+192d) | 10d → 7d |  |  | resources none → Business Architect [50%]; System Analyst [50%] |
| 28 | **Модул Склад** | 2012-02-27 → 2012-09-04 (+190d) | 2012-07-27 → 2012-09-17 (+52d) | 110d → 10d |  | E1 - Начален анализ и дизайн → none | was named E3 - Модул Склад |
| 29 | Разработване на клас и обект диаграми (Class and Object Diagrams) | 2012-02-27 → 2012-09-04 (+190d) | 2012-03-27 → 2012-09-06 (+163d) | 22d → 3d |  |  | resources none → Software Architect; Designer [50%] |
| 30 | Разработване на диаграми на последователностите (Sequence Diagrams) | 2012-04-27 → 2012-09-04 (+130d) | 2012-05-28 → 2012-09-06 (+101d) | 22d → 3d |  | Разработване на потребителски случаи (Use Cases) → none | resources none → Designer [25%] |
| 31 | Разработване на диаграми на състоянията (State Diagrams) | 2012-05-29 → 2012-09-04 (+98d) | 2012-06-27 → 2012-09-06 (+71d) | 22d → 3d |  | 30 → none | resources none → Designer [25%] |
| 33 | Разработване на тестови случаи | 2012-06-28 → 2012-09-07 (+71d) | 2012-07-27 → 2012-09-10 (+45d) | 22d → 2d | 0d → 15d | 31 → 29, 30, 31 | resources none → Test Analyst |
| 34 | **Модул Примане на автомобили** | 2012-02-27 → 2012-09-07 (+193d) | 2012-07-27 → 2012-09-20 (+55d) | 110d → 10d |  | E1 - Начален анализ и дизайн → none | was named E4 - Модул Примане на автомобили |
| 35 | Разработване на клас и обект диаграми (Class and Object Diagrams) | 2012-02-27 → 2012-09-07 (+193d) | 2012-03-27 → 2012-09-11 (+168d) | 22d → 3d |  | none → 29 | resources none → Software Architect; Designer [50%] |
| 36 | Разработване на диаграми на последователностите (Sequence Diagrams) | 2012-04-27 → 2012-09-07 (+133d) | 2012-05-28 → 2012-09-11 (+106d) | 22d → 3d |  | Разработване на потребителски случаи (Use Cases) → 30 | resources none → Designer [25%] |
| 37 | Разработване на диаграми на състоянията (State Diagrams) | 2012-05-29 → 2012-09-07 (+101d) | 2012-06-27 → 2012-09-11 (+76d) | 22d → 3d |  | 36 → 31 | resources none → Designer [25%] |
| 39 | Разработване на тестови случаи | 2012-06-28 → 2012-09-12 (+76d) | 2012-07-27 → 2012-09-13 (+48d) | 22d → 2d | 0d → 12d | 37 → 35, 36, 37 | resources none → Test Analyst |
| 40 | **Модул Гаранционни автомобили** | 2012-02-27 → 2012-09-12 (+198d) | 2012-07-27 → 2012-09-24 (+59d) | 110d → 9d | 0d → 1d | E1 - Начален анализ и дизайн → none | was named E5 - Модул Гаранционни автомобили |
| 41 | Разработване на клас и обект диаграми (Class and Object Diagrams) | 2012-02-27 → 2012-09-12 (+198d) | 2012-03-27 → 2012-09-14 (+171d) | 22d → 3d | 0d → 1d | none → 35 | resources none → Software Architect; Designer [50%] |
| 42 | Разработване на диаграми на последователностите (Sequence Diagrams) | 2012-04-27 → 2012-09-12 (+138d) | 2012-05-28 → 2012-09-14 (+109d) | 22d → 3d | 0d → 1d | Разработване на потребителски случаи (Use Cases) → 36 | resources none → Designer [25%] |
| 43 | Разработване на диаграми на състоянията (State Diagrams) | 2012-05-29 → 2012-09-12 (+106d) | 2012-06-27 → 2012-09-14 (+79d) | 22d → 3d | 0d → 1d | 42 → 37 | resources none → Designer [25%] |
| 45 | Разработване на тестови случаи | 2012-06-28 → 2012-09-17 (+81d) | 2012-07-27 → 2012-09-18 (+53d) | 22d → 2d | 0d → 9d | 43 → 41, 42, 43 | resources none → Test Analyst |
| 46 | **Модул Счетоводство** | 2012-02-27 → 2012-09-17 (+203d) | 2012-07-27 → 2012-10-01 (+66d) | 110d → 11d |  | E1 - Начален анализ и дизайн → none | was named E6 - Модул Счетоводство |
| 47 | Разработване на клас и обект диаграми (Class and Object Diagrams) | 2012-02-27 → 2012-09-17 (+203d) | 2012-03-27 → 2012-09-19 (+176d) | 22d → 3d | 0d → 1d | none → 41 | resources none → Software Architect; Designer [50%] |
| 48 | Разработване на диаграми на последователностите (Sequence Diagrams) | 2012-04-27 → 2012-09-17 (+143d) | 2012-05-28 → 2012-09-19 (+114d) | 22d → 3d | 0d → 1d | Разработване на потребителски случаи (Use Cases) → 42 | resources none → Designer [25%] |
| 49 | Разработване на диаграми на състоянията (State Diagrams) | 2012-05-29 → 2012-09-17 (+111d) | 2012-06-27 → 2012-09-19 (+84d) | 22d → 3d | 0d → 1d | 48 → 43 | resources none → Designer [25%] |
| 51 | Разработване на тестови случаи | 2012-06-28 → 2012-09-20 (+84d) | 2012-07-27 → 2012-09-21 (+56d) | 22d → 2d | 0d → 6d | 49 → 47, 48, 49 | resources none → Test Analyst |
| 53 | Разработване на клас и обект диаграми (Class and Object Diagrams) | 2012-02-27 → 2012-09-20 (+206d) | 2012-03-27 → 2012-09-24 (+181d) | 22d → 3d | 0d → 1d | none → 47 | resources none → Software Architect; Designer [50%] |
| 54 | Разработване на диаграми на последователностите (Sequence Diagrams) | 2012-04-27 → 2012-09-20 (+146d) | 2012-05-28 → 2012-09-24 (+119d) | 22d → 3d | 0d → 1d | Разработване на потребителски случаи (Use Cases) → 48 | resources none → Designer [25%] |
| 55 | Разработване на диаграми на състоянията (State Diagrams) | 2012-05-29 → 2012-09-20 (+114d) | 2012-06-27 → 2012-09-24 (+89d) | 22d → 3d | 0d → 1d | 54 → 49 | resources none → Designer [25%] |
| 57 | Разработване на тестови случаи | 2012-06-28 → 2012-09-25 (+89d) | 2012-07-27 → 2012-09-26 (+61d) | 22d → 2d | 0d → 3d | 55 → 53, 54, 55 | resources none → Test Analyst |

## Version 3 (saved 2012-09-02)

Note of the change: отразен е напредъка по проекта 2012-09-02

Last finish stays 2012-10-23. Complete tasks 0 → 14.

Changed:

| ID | Task | Start | Finish | Complete | Total float |
| --- | --- | --- | --- | --- | --- |
| 1 | **Система за управление на фирмен сервиз за превозни средства** | 2012-08-01 A |  | 0% → 25% |  |
| 2 | **I** | 2012-08-01 A |  | 0% → 98% | 0d → 3.04d |
| 3 | Съставяне на проектен план | 2012-08-01 A | 2012-08-09 A | 0% → 100% | 1.75d → none |
| 4 | Определяне на ролите в екипа | 2012-08-01 A | 2012-08-07 A | 0% → 100% | 1d → none |
| 5 | Определяне на потребителските изисквания | 2012-08-01 A | 2012-08-07 A | 0% → 100% | 1d → none |
| 6 | Преглед на съществуващата инфраструктура | 2012-08-01 A | 2012-08-01 A | 0% → 100% | 0d → none |
| 7 | Изготвяне на визията на проекта | 2012-08-08 A | 2012-08-10 A | 0% → 100% | 1d → none |
| 8 | Изготвяне на план за управлението на качеството | 2012-08-01 A | 2012-08-01 A | 0% → 100% | 8d → none |
| 9 | Изготвяне на документ с препоръки и изисквания при проектирането и разработката | 2012-08-02 A | 2012-08-02 A | 0% → 100% | 0d → none |
| 11 | **Уточняване на нещата необходими за следващите фази** | 2012-08-01 A | 2012-08-09 A | 0% → 100% | 0d → none |
| 12 | Уточняване на средата за проектиране | 2012-08-01 A | 2012-08-07 A | 0% → 100% | 2d → none |
| 13 | Уточняване на средата за разработка | 2012-08-03 A | 2012-08-09 A | 0% → 100% | 0d → none |
| 14 | Уточняване на системата за контрол на версиите (Version Control) | 2012-08-03 A | 2012-08-09 A | 0% → 100% | 0d → none |
| 15 | Уточняване на системата за контрол на задачите (Issue Tracker) | 2012-08-03 A | 2012-08-09 A | 0% → 100% | 0d → none |
| 16 | **Уточняване на хостинга върху който ще се разположи системата** | 2012-08-03 A | 2012-08-09 A | 0% → 100% | 0d → none |
| 17 | Уточняване на използвания Application / Web сървър | 2012-08-03 A | 2012-08-09 A | 0% → 100% | 0d → none |
| 18 | Уточняване на използваната система за управление на бази от данни | 2012-08-03 A | 2012-08-09 A | 0% → 100% | 0d → none |
| 19 | Изготвяне на упътване за конфигурация и използване на нужните интсртументи | 2012-08-10 A | 2012-08-13 A | 0% → 100% | 0d → none |
| 20 | **E** | 2012-08-14 A |  | 0% → 30% |  |
| 21 | Разработване на бизнес модел (BPM) | 2012-08-14 A |  | 0% → 50% | 0d → 3.5d |
| 22 | Разработване на модел на данните (Data Model) | 2012-08-24 A |  | 0% → 50% |  |
| 23 | Разработване на случаите на употреба (Use-case) | 2012-08-24 A |  | 0% → 50% |  |

## Version 4 (saved 2012-09-06)

Note of the change: Data Model = OK

Last finish stays 2012-10-23. Complete tasks 14 → 15.

Changed:

| ID | Task | Finish | Complete | Total float |
| --- | --- | --- | --- | --- |
| 1 | **Система за управление на фирмен сервиз за превозни средства** |  | 25% → 26% |  |
| 20 | **E** |  | 30% → 39% |  |
| 22 | Разработване на модел на данните (Data Model) | 2012-09-03 A | 50% → 100% | 0d → none |

## Version 5 (saved 2012-09-07)

Note of the change: Отразен напредъка в изготвянето на проектните артефакти

Last finish stays 2012-10-23. Complete tasks 15 → 17.

Changed:

| ID | Task | Start | Finish | Complete | Total float |
| --- | --- | --- | --- | --- | --- |
| 1 | **Система за управление на фирмен сервиз за превозни средства** |  |  | 26% → 32% |  |
| 20 | **E** |  |  | 39% → 80% |  |
| 24 | Изготвяне на софтуерната архитектура | 2012-08-14 A | 2012-08-20 A | 0% → 100% | 0d → none |
| 25 | Разработване на клас и обект диаграми (високо ниво) | 2012-08-21 A | 2012-09-03 A | 0% → 100% | 0d → none |

## Version 6 (saved 2012-09-08)

Note of the change: Business Model = OK

Last finish stays 2012-10-23. Complete tasks 17 → 18.

Changed:

| ID | Task | Finish | Complete | Total float |
| --- | --- | --- | --- | --- |
| 1 | **Система за управление на фирмен сервиз за превозни средства** |  | 32% → 33% |  |
| 20 | **E** |  | 80% → 91% |  |
| 21 | Разработване на бизнес модел (BPM) | 2012-08-23 A | 50% → 100% | 3.5d → none |

## Version 7 (saved 2012-09-12)

Note of the change: завършен документа Software Requirements Specification; отразен напредъка на проекта; отразен статуса на документите;

Last finish stays 2012-10-23. Complete tasks 18 → 19.

Changed:

| ID | Task | Finish | Complete | Total float |
| --- | --- | --- | --- | --- |
| 1 | **Система за управление на фирмен сервиз за превозни средства** |  | 33% → 35% |  |
| 20 | **E** | 2012-09-03 A | 91% → 100% | 0d → none |
| 23 | Разработване на случаите на употреба (Use-case) | 2012-09-03 A | 50% → 100% | 0d → none |

## Version 8 (saved 2012-09-12)

Note of the change: Актуализиран статуса на документите и напредъка на проекта

Last finish stays 2012-10-23. Complete tasks 19 → 20.

Changed:

| ID | Task | Start | Finish | Complete | Total float |
| --- | --- | --- | --- | --- | --- |
| 2 | **I** |  | 2012-08-13 A | 98% → 100% | 51d → none |
| 10 | Изготвяне на списък с рисковете | 2012-08-09 A | 2012-08-10 A | 0% → 100% | 52.75d → none |

## Version 9 (saved 2012-11-17)

Note of the change: актуализиран напредъка по проекта

Last finish stays 2012-10-23. Complete tasks 20 → 43.

Changed:

| ID | Task | Start | Finish | Complete | Total float |
| --- | --- | --- | --- | --- | --- |
| 1 | **Система за управление на фирмен сервиз за превозни средства** |  |  | 35% → 73% |  |
| 26 | **C** | 2012-09-04 A |  | 0% → 60% | 0d → 0.71d |
| 27 | Разработване на поддържаща (системна) функционалност | 2012-09-04 A | 2012-09-11 A | 0% → 100% | 14d → none |
| 28 | **Модул Склад** | 2012-09-04 A |  | 0% → 86% | 0d → 10d |
| 29 | Разработване на клас и обект диаграми (Class and Object Diagrams) | 2012-09-04 A | 2012-09-06 A | 0% → 100% | 0d → none |
| 30 | Разработване на диаграми на последователностите (Sequence Diagrams) | 2012-09-04 A | 2012-09-06 A | 0% → 100% | 0d → none |
| 31 | Разработване на диаграми на състоянията (State Diagrams) | 2012-09-04 A |  | 0% → 50% | 0d → 14.5d |
| 32 | Имплементиране на модула | 2012-09-07 A | 2012-09-17 A | 0% → 100% | 1d → none |
| 33 | Разработване на тестови случаи | 2012-09-07 A |  | 0% → 50% |  |
| 34 | **Модул Примане на автомобили** | 2012-09-07 A |  | 0% → 86% | 0d → 7d |
| 35 | Разработване на клас и обект диаграми (Class and Object Diagrams) | 2012-09-07 A | 2012-09-11 A | 0% → 100% | 0d → none |
| 36 | Разработване на диаграми на последователностите (Sequence Diagrams) | 2012-09-07 A | 2012-09-11 A | 0% → 100% | 0d → none |
| 37 | Разработване на диаграми на състоянията (State Diagrams) | 2012-09-07 A |  | 0% → 50% | 0d → 13d |
| 38 | Имплементиране на модула | 2012-09-12 A | 2012-09-20 A | 0% → 100% | 0d → none |
| 39 | Разработване на тестови случаи | 2012-09-12 A |  | 0% → 50% |  |
| 40 | **Модул Гаранционни автомобили** | 2012-09-12 A |  | 0% → 84% | 1d → 15.46d |
| 41 | Разработване на клас и обект диаграми (Class and Object Diagrams) | 2012-09-12 A | 2012-09-14 A | 0% → 100% | 1d → none |
| 42 | Разработване на диаграми на последователностите (Sequence Diagrams) | 2012-09-12 A | 2012-09-14 A | 0% → 100% | 1d → none |
| 43 | Разработване на диаграми на състоянията (State Diagrams) | 2012-09-12 A | 2012-09-14 A | 0% → 100% | 1d → none |
| 44 | Имплементиране на модула | 2012-09-18 A |  | 0% → 50% | 1d → 15.46d |
| 45 | Разработване на тестови случаи | 2012-09-17 A | 2012-09-18 A | 0% → 100% | 9d → none |
| 46 | **Модул Счетоводство** | 2012-09-17 A |  | 0% → 92% | 0d → 10.46d |
| 47 | Разработване на клас и обект диаграми (Class and Object Diagrams) | 2012-09-17 A | 2012-09-19 A | 0% → 100% | 1d → none |
| 48 | Разработване на диаграми на последователностите (Sequence Diagrams) | 2012-09-17 A | 2012-09-19 A | 0% → 100% | 1d → none |
| 49 | Разработване на диаграми на състоянията (State Diagrams) | 2012-09-17 A |  | 0% → 50% | 1d → 18.46d |
| 50 | Имплементиране на модула | 2012-09-21 A | 2012-10-01 A | 0% → 100% | 0d → none |
| 51 | Разработване на тестови случаи | 2012-09-20 A | 2012-09-21 A | 0% → 100% | 6d → none |
| 52 | **Модул Електронно регистриране** | 2012-09-20 A |  | 0% → 87% | 1d → 11.46d |
| 53 | Разработване на клас и обект диаграми (Class and Object Diagrams) | 2012-09-20 A | 2012-09-24 A | 0% → 100% | 1d → none |
| 54 | Разработване на диаграми на последователностите (Sequence Diagrams) | 2012-09-20 A | 2012-09-24 A | 0% → 100% | 1d → none |
| 55 | Разработване на диаграми на състоянията (State Diagrams) | 2012-09-20 A | 2012-09-24 A | 0% → 100% | 1d → none |
| 56 | Имплементиране на модула | 2012-09-25 A | 2012-09-28 A | 0% → 100% | 1d → none |
| 58 | **Тестване на системата** | 2012-10-02 A |  | 0% → 88% | 0d → 1.71d |
| 59 | Функционални тестове | 2012-10-02 A |  | 0% → 75% | 0d → 1.71d |
| 60 | Нефункционални тестове | 2012-10-02 A | 2012-10-15 A | 0% → 100% | 0d → none |
| 64 | Изготвяне на план за разгъване на системата | 2012-10-16 A | 2012-10-16 A | 0% → 100% | 0d → none |
| 65 | **T** | 2012-10-17 A |  | 0% → 29% |  |
| 66 | Разгъване, стартиране и конфигуриране на системата | 2012-10-17 A | 2012-10-17 A | 0% → 100% | 4d → none |
| 67 | Предаване на документацията по проекта | 2012-10-17 A | 2012-10-17 A | 0% → 100% | 4d → none |
